# CRN_Geral

Schedule from MS Project, 2019-04-02 to 2019-05-14.

## Calendars

- Padrão: Mon-Fri 09:00-12:00, 13:00-18:00; Sat-Sun off.

## Resources

| Resource |
| --- |
| Analista IS 01 |
| Analista IS 02 |
| Coordenador Tec. |
| Coordenador de Projeto |
| Analista BI 01 |

## Schedule

| ID | WBS | Task | Duration | Start | Finish | Total slack | Constraint | Resources | Work |
| --- | --- | --- | --- | --- | --- | --- | --- | --- | --- |
| 1 | 1 | Avaliação de API/Webservices CRM Educacional | 24h | 2019-04-02 09:00 | 2019-04-04 18:00 | 28d | start no earlier than 2019-04-02 09:00 | Analista IS 01; Analista IS 02; Coordenador Tec. | 72h |
| 2 | 2 | **Integração CRM Lyceum** | 18.5d | 2019-04-05 09:00 | 2019-05-01 14:00 | 9.5d |  |  | 180h |
| 3 | 2.1 | **Requisitos e Funcionalidades adicionais** | 6.5d | 2019-04-05 09:00 | 2019-04-15 14:00 | 21.5d |  |  | 68h |
| 4 | 2.1.1 | **Implementação de funções adicionais** | 4d | 2019-04-05 09:00 | 2019-04-10 18:00 | 24d |  |  | 32h |
| 5 | 2.1.1.1 | Devolução de alunos cancelados | 8h | 2019-04-05 09:00 | 2019-04-05 18:00 | 27d | start no earlier than 2019-04-05 09:00 | Analista IS 01 | 8h |
| 6 | 2.1.1.2 | Devolução de aluno com turma confirmada | 8h | 2019-04-08 09:00 | 2019-04-08 18:00 | 26d | start no earlier than 2019-04-08 09:00 | Analista IS 01 | 8h |
| 7 | 2.1.1.3 | Devolução de real período letivo matriculado | 8h | 2019-04-09 09:00 | 2019-04-09 18:00 | 25d | start no earlier than 2019-04-09 09:00 | Analista IS 01 | 8h |
| 8 | 2.1.1.4 | Devolução de real curso matriculado | 8h | 2019-04-10 09:00 | 2019-04-10 18:00 | 24d | start no earlier than 2019-04-10 09:00 | Analista IS 01 | 8h |
| 9 | 2.1.2 | Avaliação de procedimentos/campos integrados | 16h | 2019-04-11 09:00 | 2019-04-12 18:00 | 22d | start no earlier than 2019-04-11 09:00 | Analista IS 01 | 16h |
| 10 | 2.1.3 | Avaliação de regras de negócio entre Lyceum e CRM | 16h | 2019-04-11 09:00 | 2019-04-12 18:00 | 22d | start no earlier than 2019-04-11 09:00 | Coordenador de Projeto | 16h |
| 11 | 2.1.4 | Validação de requisitos com Área de negócio | 4h | 2019-04-15 09:00 | 2019-04-15 14:00 | 21.5d | start no earlier than 2019-04-15 09:00 | Coordenador de Projeto | 4h |
| 12 | 2.2 | **Desenvolvimento de API Principal** | 8d | 2019-04-16 09:00 | 2019-04-25 18:00 | 13d |  |  | 88h |
| 13 | 2.2.1 | Definição de regras e linha temporal para movimentação de dados | 16h | 2019-04-16 09:00 | 2019-04-17 18:00 | 19d | start no earlier than 2019-04-16 09:00 | Analista IS 01; Coordenador Tec. | 32h |
| 14 | 2.2.2 | Definição do modelo de integração | 8h | 2019-04-18 09:00 | 2019-04-18 18:00 | 18d | start no earlier than 2019-04-18 09:00 | Analista IS 01; Coordenador Tec. | 16h |
| 15 | 2.2.3 | Implementação de funcionalidades principais | 40h | 2019-04-19 09:00 | 2019-04-25 18:00 | 13d | start no earlier than 2019-04-19 09:00 | Analista IS 01 | 40h |
| 16 | 2.3 | Testes e validação | 16h | 2019-04-26 09:00 | 2019-04-29 18:00 | 11d | start no earlier than 2019-04-26 09:00 | Analista IS 02 | 16h |
| 17 | 2.4 | Homologação com Área de negócio | 4h | 2019-05-01 09:00 | 2019-05-01 14:00 | 9.5d | start no earlier than 2019-05-01 09:00 | Coordenador de Projeto | 4h |
| 18 | 2.5 | Produção | 4h | 2019-05-01 09:00 | 2019-05-01 14:00 | 9.5d | start no earlier than 2019-05-01 09:00 | Analista IS 01 | 4h |
| 19 | 3 | **DM CRM Educacional** | 28d | 2019-04-05 09:00 | 2019-05-14 18:00 | 0d |  |  | 360h |
| 20 | 3.1 | **Planejamento** | 4d | 2019-04-05 09:00 | 2019-04-10 18:00 | 24d |  |  | 48h |
| 21 | 3.1.1 | **Levantamento de requisitos funcionais** | 4d | 2019-04-05 09:00 | 2019-04-10 18:00 | 24d |  |  | 48h |
| 22 | 3.1.1.1 | Regras de negócio e campos | 16h | 2019-04-05 09:00 | 2019-04-08 18:00 | 26d | start no earlier than 2019-04-05 09:00 | Coordenador de Projeto | 16h |
| 23 | 3.1.1.2 | Indicadores e visões | 16h | 2019-04-09 09:00 | 2019-04-10 18:00 | 24d | start no earlier than 2019-04-09 09:00 | Coordenador de Projeto; Analista BI 01 | 32h |
| 24 | 3.2 | **Desenho/Desenvolvimento (Pré-estimado)** | 14.5d | 2019-04-16 09:00 | 2019-05-06 14:00 | 6.5d |  |  | 216h |
| 25 | 3.2.1 | Modelagem de banco multidimensional | 32h | 2019-04-16 09:00 | 2019-04-19 18:00 | 17d | start no earlier than 2019-04-16 09:00 | Coordenador de Projeto; Analista BI 01 | 64h |
| 26 | 3.2.2 | Mapeamento de Processos de Extração Transformação e Carga | 40h | 2019-04-22 09:00 | 2019-04-26 18:00 | 12d | start no earlier than 2019-04-22 09:00 | Coordenador de Projeto; Analista BI 01 | 80h |
| 27 | 3.2.3 | Implementação ETL | 20h | 2019-04-29 09:00 | 2019-05-01 14:00 | 9.5d | start no earlier than 2019-04-29 09:00 | Analista BI 01; Coordenador de Projeto | 40h |
| 28 | 3.2.4 | Desenvolvimento PBI | 20h | 2019-05-02 09:00 | 2019-05-06 14:00 | 6.5d | start no earlier than 2019-05-02 09:00 | Analista BI 01; Coordenador de Projeto | 32h |
| 29 | 3.3 | Validação de dados | 40h | 2019-05-07 09:00 | 2019-05-13 18:00 | 1d | start no earlier than 2019-05-07 09:00 | Analista BI 01; Coordenador de Projeto | 80h |
| 30 | 3.4 | Homologação | 8h | 2019-05-14 09:00 | 2019-05-14 18:00 | 0d | start no earlier than 2019-05-14 09:00 | Analista BI 01; Coordenador de Projeto | 16h |
