# DM_CRM

Schedule from MS Project, 2019-04-02 to 2019-05-09.

## Calendars

- Padrão: Mon-Fri 09:00-12:00, 13:00-18:00; Sat-Sun off.

## Resources

| Resource |
| --- |
| Analista IS 01 |
| Analista BI 01 |
| Coordenador Projeto |
| Coordenador de Projeto |

## Schedule

| ID | WBS | Task | Duration | Start | Finish | Total slack | Constraint | Resources | Work |
| --- | --- | --- | --- | --- | --- | --- | --- | --- | --- |
| 1 | 1 | **DM CRM Educacional** | 28d | 2019-04-02 | 2019-05-09 | 0d |  |  | 392h |
| 2 | 1.1 | **Planejamento** | 7d | 2019-04-02 | 2019-04-10 | 21d |  |  | 80h |
| 3 | 1.1.1 | Avaliação de API CRM | 24h | 2019-04-02 | 2019-04-04 | 25d | start no earlier than 2019-04-02 | Analista IS 01; Analista BI 01 | 48h |
| 4 | 1.1.2 | **Levantamento de requisitos funcionais** | 4d | 2019-04-05 | 2019-04-10 | 21d |  |  | 32h |
| 5 | 1.1.2.1 | Regras de negócio e campos | 16h | 2019-04-05 | 2019-04-08 | 23d | start no earlier than 2019-04-05 | Analista BI 01 | 16h |
| 6 | 1.1.2.2 | Indicadores e visões | 16h | 2019-04-09 | 2019-04-10 | 21d | start no earlier than 2019-04-09 | Coordenador de Projeto | 16h |
| 7 | 1.2 | **Desenho/Desenvolvimento (Pré-estimado)** | 14d | 2019-04-11 | 2019-04-30 | 7d |  |  | 216h |
| 8 | 1.2.1 | Modelagem de banco multidimensional | 32h | 2019-04-11 | 2019-04-16 | 17d | start no earlier than 2019-04-11 | Coordenador de Projeto; Analista BI 01 | 64h |
| 9 | 1.2.2 | Mapeamento de Processos de Extração Transformação e Carga | 40h | 2019-04-17 | 2019-04-23 | 12d | start no earlier than 2019-04-17 | Coordenador de Projeto; Analista BI 01 | 80h |
| 10 | 1.2.3 | Implementação ETL | 20h | 2019-04-24 | 2019-04-26 | 9.5d | start no earlier than 2019-04-24 | Analista BI 01; Coordenador de Projeto | 40h |
| 11 | 1.2.4 | Desenvolvimento PBI | 16h | 2019-04-29 | 2019-04-30 | 7d | start no earlier than 2019-04-29 | Analista BI 01; Coordenador de Projeto | 32h |
| 12 | 1.3 | Validação de dados | 40h | 2019-05-02 | 2019-05-08 | 1d | start no earlier than 2019-05-02 | Analista BI 01; Coordenador de Projeto | 80h |
| 13 | 1.4 | Homologação | 8h | 2019-05-09 | 2019-05-09 | 0d | start no earlier than 2019-05-09 | Analista BI 01; Coordenador de Projeto | 16h |
